# NORTHSTAR GRID CONNECTION

Schedule from Primavera P6, 2026-01-05 to 2028-03-14, data date 2026-02-28, A marks actual dates.

## Schedule

| ID | WBS | Activity | Type | Duration | Start | Finish | Predecessors | Complete | Remaining | Total float |
| --- | --- | --- | --- | --- | --- | --- | --- | --- | --- | --- |
|  | NS | **Northstar Grid Connection** |  |  | 2026-01-05 | 2028-03-14 |  |  |  |  |
| NS-000 |  | Notice to proceed |  | 0d | 2026-01-05 A | 2026-01-05 A |  | 100% |  |  |
|  | BUILD | **Construction** |  |  | 2026-09-15 | 2027-10-05 |  |  |  |  |
| NS-300 |  | Substation civils and foundations |  | 130d | 2026-09-15 | 2027-03-15 | NS-200 FS+5d |  |  | -5d |
| NS-400 |  | Primary plant installation |  | 120d | 2027-04-20 | 2027-10-05 | NS-210, NS-300 |  |  | -6d |
|  | COMM | **Testing and Commissioning** |  |  | 2027-10-06 | 2028-03-14 |  |  |  |  |
| NS-500 |  | Protection testing |  | 65d | 2027-10-06 | 2028-01-04 | NS-400 |  |  | -7d |
| NS-600 |  | System commissioning |  | 50d | 2028-01-05 | 2028-03-14 | NS-500 |  |  | -9d |
| NS-900 |  | Ready for service | milestone | 0d | 2028-02-26 | 2028-02-26 | NS-600 |  |  | -9d |
|  | DES | **Design and Consents** |  |  | 2026-01-06 | 2026-07-27 |  |  |  |  |
| NS-100 |  | Detailed design mobilisation |  | 20d | 2026-01-06 A | 2026-02-09 A | NS-000 | 100% |  |  |
| NS-110 |  | Primary substation detailed design |  | 60d | 2026-02-10 A | 2026-05-04 | NS-100 | 25% | 45d | 5d |
| NS-120 |  | Planning consent determination |  | 60d | 2026-05-05 | 2026-07-27 | NS-110 |  |  | 2d |
|  | PROC | **Long Lead Procurement** |  |  | 2026-07-28 | 2027-04-19 |  |  |  |  |
| NS-200 |  | Long lead procurement release |  | 30d | 2026-07-28 | 2026-09-07 | NS-120 |  |  | 1d |
| NS-210 |  | Switchgear manufacture and FAT |  | 160d | 2026-09-08 | 2027-04-19 | NS-200 |  |  | -4d |
